# E-COMMERCE

Schedule from MS Project, 2024-12-18 to 2026-04-28, costs in $, A marks actual dates.

## Calendars

- Standard: Mon-Thu 08:00-12:00, 13:00-17:00; Fri-Sat off; Sun 08:00-13:00, 14:00-17:00. Exceptions (off unless hours are given): 2025-01-01 (راس السنه, recurring), 2025-03-31 to 2026-03-31 (عيد الفطر, recurring), 2025-06-10 to 2026-06-10 (عيد الاضحى, recurring), 2025-10-06 to 2026-10-06 (عيد القوات المسلحه, recurring).

## Resources

| Resource | Rate | Cost per use |
| --- | --- | --- |
| network architecter | 15 |  |
| Server Administrator | 20 |  |
| UI/UX designers | 10 |  |
| mobile Frontend Developers | 10 |  |
| web Frontend Developers | 10 |  |
| Backend Developers | 15 |  |
| IT team | 15 |  |
| testing team | 30 | 100 |
| cyber security team | 15 |  |
| marketing team leader | 30 |  |
| marketers | 15 |  |
| financial manager | 50 |  |
| Monitoring Specialist | 40 |  |
| Tech leader | 40 |  |
| DevOps engineers | 20 |  |
| software engineers | 20 | 50 |
| Data engineer | 25 |  |
| ML engineer | 30 |  |
| project manager | 50 |  |

## Schedule

| ID | WBS | Task | Type | Duration | Start | Finish | Predecessors | Complete | Remaining | Baseline start | Baseline finish | Baseline duration | Total slack | Free slack | Constraint | Resources | Work | Actual work | Cost | Baseline cost | Actual cost |
| --- | --- | --- | --- | --- | --- | --- | --- | --- | --- | --- | --- | --- | --- | --- | --- | --- | --- | --- | --- | --- | --- |
| 1 | 1 | **Project and Strategy** |  | 24d | 2024-12-18 A | 2025-01-21 |  | 15% | 20.39d | 2024-12-18 | 2025-01-21 | 24d | 0d |  |  |  | 504h | 104h | 25,200 | 25,200 | 5,200 |
| 2 | 1.1 | **Managment** |  | 20d | 2024-12-18 A | 2025-01-15 |  | 13% | 17.33d | 2024-12-18 | 2025-01-15 | 20d | 4d | 0d |  |  | 240h | 32h | 12,000 | 11,000 | 1,600 |
| 3 | 1.1.1 | Identify stakeholders |  | 10d | 2024-12-18 A | 2024-12-31 |  | 20% | 8d | 2024-12-18 | 2024-12-31 | 10d | 14d | 0d | start no earlier than 2024-12-18 | project manager | 80h | 16h | 4,000 | 4,000 | 800 |
| 4 | 1.1.2 | Identify and analyze competitors |  | 10d | 2024-12-18 A | 2024-12-31 | 3SS | 20% | 8d | 2024-12-18 | 2024-12-31 | 10d | 4d | 0d |  | project manager | 80h | 16h | 4,000 | 4,000 | 800 |
| 5 | 1.1.3 | Role Distribution |  | 10d | 2025-01-02 | 2025-01-15 | 4 |  |  | 2025-01-02 | 2025-01-15 | 10d | 4d |  |  | project manager | 80h |  | 4,000 | 4,000 |  |
| 6 | 1.2 | complete Management | milestone | 0d | 2025-01-15 | 2025-01-15 | 2 |  |  | 2025-01-15 | 2025-01-15 |  | 4d |  |  |  |  |  |  |  |  |
| 7 | 1.3 | **Risk Management** |  | 2.5d | 2024-12-18 A | 2024-12-22 A | 2SS | 100% |  | 2024-12-18 | 2024-12-22 | 2.5d |  |  |  |  | 40h | 40h | 2,000 | 2,000 | 2,000 |
| 8 | 1.3.1 | Identify risks and set alternative plans |  | 0.5w | 2024-12-18 A | 2024-12-22 A |  | 100% |  | 2024-12-18 | 2024-12-22 | 0.5w |  |  |  | financial manager; project manager | 40h | 40h | 2,000 | 2,000 | 2,000 |
| 9 | 1.4 | complete risks | milestone | 0d | 2024-12-22 | 2024-12-22 | 7 |  |  | 2024-12-22 | 2024-12-22 |  | 21.5d |  |  |  |  |  |  |  |  |
| 10 | 1.5 | **Scope** |  | 24d | 2024-12-18 A | 2025-01-21 | 7SS | 8% | 22d | 2024-12-18 | 2025-01-21 | 24d | 0d |  |  |  | 224h | 32h | 11,200 | 10,200 | 1,600 |
| 11 | 1.5.1 | Determine project scope |  | 2d | 2024-12-18 A | 2024-12-19 A |  | 100% |  | 2024-12-18 | 2024-12-19 | 2d |  |  |  | financial manager; project manager | 32h | 32h | 1,600 | 1,600 | 1,600 |
| 12 | 1.5.2 | deal with project sponsorship |  | 1d | 2024-12-22 | 2024-12-22 | 11 |  |  | 2024-12-22 | 2024-12-22 | 1d | 0d |  |  | financial manager; project manager | 16h |  | 800 | 800 |  |
| 13 | 1.5.3 | define resources |  | 1d | 2024-12-23 | 2024-12-23 | 12 |  |  | 2024-12-23 | 2024-12-23 | 1d | 0d |  |  | financial manager; project manager | 16h |  | 800 | 800 |  |
| 14 | 1.5.4 | collect resources |  | 20d | 2024-12-24 | 2025-01-21 | 13 |  |  | 2024-12-24 | 2025-01-21 | 20d | 0d |  |  | project manager | 160h |  | 8,000 | 8,000 |  |
| 15 | 2 | complete of the project strategy | milestone | 0d | 2025-01-21 | 2025-01-21 | 1, 10 |  |  | 2025-01-21 | 2025-01-21 |  | 325.5d |  | finish no earlier than 2025-01-05 |  |  |  |  |  |  |
| 16 | 3 | **Information system** |  | 315.5d | 2025-01-21 | 2026-04-14 | 1 |  |  | 2025-01-21 | 2026-06-09 | 355.5d | 0d |  |  | DevOps engineers | 13564h |  | 280,180 | 312,630 |  |
| 17 | 3.1 | **Software** |  | 315.5d | 2025-01-22 | 2026-04-14 |  |  |  | 2025-01-22 | 2026-06-09 | 355.5d | 0d |  |  |  | 9152h |  | 181,550 | 204,000 |  |
| 18 | 3.1.1 | **Analysis/Software Requirements** |  | 30d | 2025-01-22 | 2025-03-04 |  |  |  | 2025-01-22 | 2025-03-04 | 30d | 0d |  |  | Tech leader | 560h |  | 22,400 | 22,400 |  |
| 19 | 3.1.1.1 | Conduct needs analysis |  | 10d | 2025-01-22 | 2025-02-04 |  |  |  | 2025-01-22 | 2025-02-04 | 10d | 0d |  |  | Tech leader | 80h |  | 3,200 | 3,200 |  |
| 20 | 3.1.1.2 | Draft preliminary software specifications |  | 10d | 2025-01-22 | 2025-02-04 | 19SS |  |  | 2025-01-22 | 2025-02-04 | 10d | 0d |  |  | Tech leader | 80h |  | 3,200 | 3,200 |  |
| 21 | 3.1.1.3 | Review software specifications/budget with team |  | 2w | 2025-02-05 | 2025-02-18 | 20 |  |  | 2025-02-05 | 2025-02-18 | 2w | 0d |  |  | Tech leader | 80h |  | 3,200 | 3,200 |  |
| 22 | 3.1.1.4 | Functional and non-functional requirements specification |  | 10d | 2025-02-19 | 2025-03-04 | 21 |  |  | 2025-02-19 | 2025-03-04 | 10d | 0d |  |  | Tech leader | 80h |  | 3,200 | 3,200 |  |
| 23 | 3.1.2 | Analysis complete | milestone | 0d | 2025-02-26 | 2025-02-26 |  |  |  | 2025-02-26 | 2025-02-26 | 0d | 5d |  | start no earlier than 2025-02-26 |  |  |  |  |  |  |
| 24 | 3.1.3 | **Design** |  | 68d | 2025-03-05 | 2025-06-09 | 18 |  |  | 2025-03-05 | 2025-08-05 | 108d | 0d |  |  | software engineers; UI/UX designers | 1952h |  | 29,000 | 51,450 |  |
| 25 | 3.1.3.1 | **UI/UX Design** |  | 20d | 2025-03-05 | 2025-04-02 | 23 |  |  | 2025-03-05 | 2025-04-02 | 20d | 0d |  |  | UI/UX designers | 320h |  | 3,200 | 3,200 |  |
| 26 | 3.1.3.1.1 | Interactive Prototypes |  | 2w | 2025-03-05 | 2025-03-18 |  |  |  | 2025-03-05 | 2025-03-18 | 2w | 0d |  |  | UI/UX designers | 80h |  | 800 | 800 |  |
| 27 | 3.1.3.1.2 | Wireframes for Core Features |  | 2w | 2025-03-19 | 2025-04-02 | 26 |  |  | 2025-03-19 | 2025-04-02 | 2w | 0d |  |  | UI/UX designers | 80h |  | 800 | 800 |  |

| ID | WBS | Task | Type | Duration | Start | Finish | Predecessors | Baseline start | Baseline finish | Baseline duration | Total slack | Constraint | Resources | Work | Cost | Baseline cost |
| --- | --- | --- | --- | --- | --- | --- | --- | --- | --- | --- | --- | --- | --- | --- | --- | --- |
| 28 | 3.1.3.2 | **Design Software Architecture** |  | 20d | 2025-04-03 | 2025-04-30 | 27 | 2025-04-03 | 2025-06-26 | 60d | 0d |  | software engineers | 320h | 6,500 | 19,350 |
| 29 | 3.1.3.2.1 | Develop Unified Architecture for Multiplatform Support |  | 1mo | 2025-04-03 | 2025-04-30 |  | 2025-04-03 | 2025-04-30 | 1mo | 0d | start no earlier than 2025-01-08 | software engineers | 160h | 3,250 | 3,250 |
| 30 | 3.1.3.3 | **Design Platform-Specific Elements** |  | 20d | 2025-05-01 | 2025-05-28 |  | 2025-06-29 | 2025-07-24 | 20d | 0d |  |  | 160h | 1,600 | 1,600 |
| 31 | 3.1.3.3.1 | Mobile Design (iOS and Android) |  | 2w | 2025-05-01 | 2025-05-14 | 29 | 2025-06-29 | 2025-07-10 | 2w | 0d |  | mobile Frontend Developers | 80h | 800 | 800 |
| 32 | 3.1.3.3.2 | Web Design (Responsive Layouts) |  | 2w | 2025-05-15 | 2025-05-28 | 31 | 2025-07-13 | 2025-07-24 | 2w | 0d | start no earlier than 2025-01-14 | web Frontend Developers | 80h | 800 | 800 |
| 33 | 3.1.3.4 | Design review and approval |  | 8d | 2025-05-29 | 2025-06-09 | 32 | 2025-07-27 | 2025-08-05 | 8d | 0d |  | software engineers | 64h | 1,330 | 1,330 |
| 34 | 3.1.4 | complete Design | milestone | 0d | 2025-06-09 | 2025-06-09 | 24 | 2025-08-05 | 2025-08-05 |  | 0d |  |  |  |  |  |
| 35 | 3.1.5 | **Development** |  | 142.5d | 2025-06-11 | 2025-12-29 | 24 | 2025-08-06 | 2026-02-23 | 142.5d | 0d |  |  | 3600h | 45,150 | 45,150 |
| 36 | 3.1.5.1 | **Front-End Development** |  | 90d | 2025-06-11 | 2025-10-15 |  | 2025-08-06 | 2025-12-10 | 90d | 0d |  | mobile Frontend Developers; web Frontend Developers | 2160h | 21,600 | 21,600 |
| 37 | 3.1.5.1.1 | Develop Web Application (React, Angular, or Vue.js) |  | 2mo | 2025-06-11 | 2025-08-05 |  | 2025-08-06 | 2025-09-30 | 2mo | 0d |  | web Frontend Developers | 320h | 3,200 | 3,200 |
| 38 | 3.1.5.1.2 | Develop Mobile Apps (React Native, Flutter, or Swift/Kotlin) |  | 2mo | 2025-08-06 | 2025-09-30 | 37 | 2025-10-01 | 2025-11-26 | 2mo | 0d |  | mobile Frontend Developers | 320h | 3,200 | 3,200 |
| 39 | 3.1.5.1.3 | Implement Responsive and Adaptive Design |  | 2w | 2025-10-01 | 2025-10-15 | 38 | 2025-11-27 | 2025-12-10 | 2w | 0d |  | web Frontend Developers | 80h | 800 | 800 |
| 40 | 3.1.5.2 | **- Back-End Development** |  | 40d | 2025-10-05 | 2025-12-01 | 39FS-7.5% | 2025-12-01 | 2026-01-26 | 40d | 0d |  | Backend Developers | 960h | 14,400 | 14,400 |
| 41 | 3.1.5.2.1 | Develop Core Application Logic |  | 2mo | 2025-10-05 | 2025-12-01 |  | 2025-12-01 | 2026-01-26 | 2mo | 0d |  | Backend Developers | 320h | 4,800 | 4,800 |
| 42 | 3.1.5.2.2 | Set Up APIs for Data Exchange |  | 2mo | 2025-10-05 | 2025-12-01 |  | 2025-12-01 | 2026-01-26 | 2mo | 20d |  | Backend Developers | 320h | 4,800 | 4,800 |
| 43 | 3.1.5.2.3 | back-End complete | milestone | 0d | 2025-10-05 | 2025-10-05 |  | 2025-12-01 | 2025-12-01 |  | 0d |  |  |  |  |  |
| 44 | 3.1.5.3 | **- Integration** |  | 128d | 2025-06-11 | 2025-12-08 |  | 2025-08-06 | 2026-02-02 | 127.5d |  |  |  | 240h | 4,200 | 4,200 |
| 45 | 3.1.5.3.1 | Integrate APIs and Microservices |  | 1w | 2025-06-11 | 2025-06-17 |  | 2025-08-06 | 2025-08-12 | 1w | 123d |  | DevOps engineers; Backend Developers | 80h | 1,400 | 1,400 |
| 46 | 3.1.5.3.2 | Connect Third-Party Services (Payment Gateways, Analytics) |  | 1w | 2025-12-01 | 2025-12-08 | 41 | 2026-01-26 | 2026-02-02 | 1w | 0.5d |  | DevOps engineers; Backend Developers | 80h | 1,400 | 1,400 |
| 47 | 3.1.5.3.3 | Enable Platform-Specific Features (Push Notifications, Offline Mode) |  | 1w | 2025-12-01 | 2025-12-08 | 41 | 2026-01-26 | 2026-02-02 | 1w | 0d |  | DevOps engineers; Backend Developers | 80h | 1,400 | 1,400 |
| 48 | 3.1.5.3.4 | integration complete | milestone | 0d | 2025-12-08 | 2025-12-08 | 47 | 2026-02-02 | 2026-02-02 |  | 0d |  |  |  |  |  |
| 49 | 3.1.5.4 | **- Cross-Platform Code Optimization** |  | 15d | 2025-12-08 | 2025-12-29 | 47 | 2026-02-02 | 2026-02-23 | 15d | 0d |  | software engineers | 240h | 4,950 | 4,950 |
| 50 | 3.1.5.4.1 | Ensure Code Reusability Across Platforms |  | 1w | 2025-12-08 | 2025-12-15 |  | 2026-02-02 | 2026-02-09 | 1w | 0d |  | software engineers | 40h | 850 | 850 |
| 51 | 3.1.5.4.2 | Re-test modified code |  | 2w | 2025-12-15 | 2025-12-29 | 50 | 2026-02-09 | 2026-02-23 | 2w | 0d |  | software engineers | 80h | 1,650 | 1,650 |
| 52 | 3.1.6 | complete development | milestone | 0d | 2025-12-29 | 2025-12-29 | 35 | 2026-02-23 | 2026-02-23 |  | 0d |  |  |  |  |  |

| ID | WBS | Task | Type | Duration | Start | Finish | Predecessors | Baseline start | Baseline finish | Baseline duration | Total slack | Free slack | Resources | Work | Cost | Baseline cost |
| --- | --- | --- | --- | --- | --- | --- | --- | --- | --- | --- | --- | --- | --- | --- | --- | --- |
| 53 | 3.1.7 | **Testing** |  | 65d | 2025-12-29 | 2026-03-30 | 52 | 2026-02-23 | 2026-05-26 | 65d | 0d |  | testing team | 2560h | 69,800 | 69,800 |
| 54 | 3.1.7.1 | Mobile App Testing (iOS and Android Emulators/Devices) |  | 1mo | 2025-12-29 | 2026-01-26 |  | 2026-02-23 | 2026-03-23 | 1mo | 5d | 0d | testing team | 160h | 4,900 | 4,900 |
| 55 | 3.1.7.2 | Desktop Testing (OS Compatibility: Windows, macOS, Linux) |  | 1mo | 2026-01-26 | 2026-02-23 | 54 | 2026-03-23 | 2026-04-21 | 1mo | 5d | 0d | testing team | 160h | 4,900 | 4,900 |
| 56 | 3.1.7.3 | Web Testing (Browser Compatibility) |  | 1mo | 2026-02-23 | 2026-03-23 | 55 | 2026-04-21 | 2026-05-19 | 1mo | 5d |  | testing team | 160h | 4,900 | 4,900 |
| 57 | 3.1.7.4 | **Platform-Specific Testing** |  | 65d | 2025-12-29 | 2026-03-30 |  | 2026-02-23 | 2026-05-26 | 65d | 0d |  | cyber security team; testing team | 1560h | 39,400 | 39,400 |
| 58 | 3.1.7.4.1 | Security Testing |  | 1mo | 2025-12-29 | 2026-01-26 |  | 2026-02-23 | 2026-03-23 | 1mo | 0d |  | testing team | 160h | 4,900 | 4,900 |
| 59 | 3.1.7.4.2 | User Acceptance Testing |  | 15d | 2026-01-26 | 2026-02-16 | 58 | 2026-03-23 | 2026-04-14 | 15d | 0d |  | testing team | 120h | 3,700 | 3,700 |
| 60 | 3.1.7.4.3 | Performance Testing |  | 30d | 2026-02-16 | 2026-03-30 | 59 | 2026-04-14 | 2026-05-26 | 30d | 0d |  | testing team | 240h | 7,300 | 7,300 |
| 61 | 3.1.8 | complete testing | milestone | 0d | 2026-03-30 | 2026-03-30 | 53 | 2026-05-26 | 2026-05-26 |  | 0d |  |  |  |  |  |
| 62 | 3.1.9 | **Deployment** |  | 10d | 2026-03-30 | 2026-04-14 | 53 | 2026-05-26 | 2026-06-09 | 10d | 0d |  | Tech leader | 480h | 15,200 | 15,200 |
| 63 | 3.1.9.1 | **Web Deployment** |  | 10d | 2026-03-30 | 2026-04-14 |  | 2026-05-26 | 2026-06-09 | 10d | 0d |  | Tech leader | 240h | 7,600 | 7,600 |
| 64 | 3.1.9.1.1 | Configure Hosting and Domain |  | 1w | 2026-03-30 | 2026-04-07 |  | 2026-05-26 | 2026-06-02 | 1w | 0d |  | Tech leader; Backend Developers | 80h | 2,200 | 2,200 |
| 65 | 3.1.9.1.2 | Set Up Continuous Deployment (CD) Pipeline |  | 1w | 2026-04-07 | 2026-04-14 | 64 | 2026-06-02 | 2026-06-09 | 1w | 0d |  | Tech leader; Backend Developers | 80h | 2,200 | 2,200 |
| 66 | 3.1.9.2 | **Mobile App Deployment** |  | 10d | 2026-03-30 | 2026-04-14 | 63SS | 2026-05-26 | 2026-06-09 | 10d | 0d |  |  | 160h | 4,400 | 4,400 |
| 67 | 3.1.9.2.1 | Prepare App Store/Play Store Submissions |  | 1w | 2026-03-30 | 2026-04-07 |  | 2026-05-26 | 2026-06-02 | 1w | 0d |  | Tech leader; Backend Developers | 80h | 2,200 | 2,200 |
| 68 | 3.1.9.2.2 | Optimize App Metadata and Screenshots |  | 1w | 2026-04-07 | 2026-04-14 | 67 | 2026-06-02 | 2026-06-09 | 1w | 0d |  | Tech leader; Backend Developers | 80h | 2,200 | 2,200 |
| 69 | 3.2 | complete software | milestone | 0d | 2026-04-14 | 2026-04-14 | 17 | 2026-06-09 | 2026-06-09 |  | 0d |  |  |  |  |  |
| 70 | 3.3 | **Hardware** |  | 30d | 2025-01-22 | 2025-03-04 | 1 | 2025-01-22 | 2025-03-04 | 30d | 0d |  | financial manager; IT team; network architecter | 1088h | 32,150 | 32,150 |
| 71 | 3.3.1 | Workstations and Laptops |  | 14d | 2025-01-22 | 2025-02-10 |  | 2025-01-22 | 2025-02-10 | 14d | 0d |  | Tech leader | 112h | 4,480 | 4,480 |
| 72 | 3.3.2 | Testing Equipment |  | 8d | 2025-02-11 | 2025-02-20 | 71 | 2025-02-11 | 2025-02-20 | 8d | 0d |  | Tech leader; testing team | 128h | 4,580 | 4,580 |
| 73 | 3.3.3 | Deployment Equipment |  | 8d | 2025-02-23 | 2025-03-04 | 72 | 2025-02-23 | 2025-03-04 | 8d | 0d |  | Tech leader; software engineers | 128h | 3,890 | 3,890 |
| 74 | 3.4 | complete hardware | milestone | 0d | 2025-03-04 | 2025-03-04 | 70 | 2025-03-04 | 2025-03-04 |  | 0d |  |  |  |  |  |
| 75 | 3.5 | **network** |  | 5d | 2025-01-22 | 2025-01-28 |  | 2025-01-22 | 2025-02-11 | 15d | 310.5d |  | IT team | 280h | 4,600 | 8,200 |
| 76 | 3.5.1 | Content Delivery Network |  | 1w | 2025-01-22 | 2025-01-28 |  | 2025-01-22 | 2025-01-28 | 1w | 310.5d | 0d | IT team; DevOps engineers; cyber security team | 120h | 2,000 | 2,000 |
| 77 | 3.5.2 | Intrusion Detection and Prevention Systems |  | 1w | 2025-01-22 | 2025-01-28 | 76SS | 2025-01-22 | 2025-01-28 | 1w | 310.5d |  | cyber security team; IT team; Server Administrator | 120h | 2,000 | 2,000 |
| 78 | 3.6 | complete Network | milestone | 0d | 2025-01-21 | 2025-01-21 |  | 2025-01-21 | 2025-01-21 |  | 0d |  |  |  |  |  |

| ID | WBS | Task | Type | Duration | Start | Finish | Predecessors | Baseline start | Baseline finish | Baseline duration | Total slack | Resources | Work | Cost | Baseline cost |
| --- | --- | --- | --- | --- | --- | --- | --- | --- | --- | --- | --- | --- | --- | --- | --- |
| 79 | 3.7 | **Data** |  | 20d | 2025-01-22 | 2025-02-18 |  | 2025-01-22 | 2025-02-18 | 20d | 0d |  | 520h | 11,400 | 11,400 |
| 80 | 3.7.1 | Design Data architecture |  | 2w | 2025-01-22 | 2025-02-04 |  | 2025-01-22 | 2025-02-04 | 2w | 10d | Data engineer | 80h | 2,000 | 2,000 |
| 81 | 3.7.2 | data backup and recovery |  | 2w | 2025-01-22 | 2025-02-04 |  | 2025-01-22 | 2025-02-04 | 2w | 10d | Server Administrator | 80h | 1,600 | 1,600 |
| 82 | 3.7.3 | Database management |  | 3w | 2025-01-22 | 2025-02-11 |  | 2025-01-22 | 2025-02-11 | 3w | 5d | Backend Developers | 120h | 1,800 | 1,800 |
| 83 | 3.7.4 | AI and machine learning |  | 1mo | 2025-01-22 | 2025-02-18 |  | 2025-01-22 | 2025-02-18 | 1mo | 0d | ML engineer | 160h | 4,800 | 4,800 |
| 84 | 3.7.5 | Data security |  | 2w | 2025-01-22 | 2025-02-04 |  | 2025-01-22 | 2025-02-04 | 2w | 10d | cyber security team | 80h | 1,200 | 1,200 |
| 85 | 3.8 | complete Data | milestone | 0d | 2025-02-18 | 2025-02-18 | 79 | 2025-02-18 | 2025-02-18 |  | 0d |  |  |  |  |
| 86 | 4 | complete of information system | milestone | 0d | 2026-04-14 | 2026-04-14 | 16 | 2026-06-09 | 2026-06-09 |  | 10d |  |  |  |  |
| 87 | 5 | **Marketing Strategy** |  | 10d | 2026-04-14 | 2026-04-28 | 16 | 2026-06-09 | 2026-06-24 | 10d | 0d | Monitoring Specialist; financial manager; marketers | 560h | 16,533.33 | 16,533.33 |
| 88 | 5.1 | Identify suitable marketing channels |  | 0.33mo | 2026-04-14 | 2026-04-23 |  | 2026-06-09 | 2026-06-21 | 0.33mo | 0d | Monitoring Specialist; marketers; marketing team leader | 160h | 4,533.33 | 4,533.33 |
| 89 | 5.2 | Launch marketing campaigns with relevant content, images, and videos |  | 0.5mo | 2026-04-14 | 2026-04-28 | 88SS | 2026-06-09 | 2026-06-24 | 0.5mo | 0d | marketers; marketing team leader | 160h | 3,600 | 3,600 |
| 90 | 6 | complete of markiting reasearch | milestone | 0d | 2026-04-28 | 2026-04-28 | 87, 89 | 2026-06-24 | 2026-06-24 |  | 0d |  |  |  |  |
